gantt
    title 建议基线计划（PMO草案·W1=M0签约周，签约后换算为日历日期）
    dateFormat YYYY-MM-DD
    axisFormat 第%W周
    todayMarker off

    section P0 立项
    T0.1 协议签署(现签字页空白)      :crit, a1, 2026-01-05, 2w
    T0.2 联络矩阵/组织落名           :a2, 2026-01-05, 1w
    T0.3 基线计划(填日历日期)        :crit, a3, 2026-01-12, 1w
    M0 合同生效                      :milestone, crit, m0, 2026-01-16, 0d

    section P1 澄清与详设
    澄清函三项 T1.1/1.4/1.5          :crit, b1, 2026-01-05, 2w
    其余待定项闭环(12条)             :b2, 2026-01-12, 3w
    T1.10 检试大纲会签               :crit, b3, 2026-01-19, 2w
    T1.12 失效行为规格               :b4, 2026-01-19, 2w
    可选项决策(网关/告警/评分)       :crit, b5, 2026-01-12, 3w
    T1.14 接线图+认可图会签          :crit, b6, 2026-01-26, 2w
    M1 详设冻结                      :milestone, crit, m1, 2026-02-06, 0d

    section P2 采购制造软件
    T2.1 长周期物料采购(⚠️交期待确认) :crit, c1, 2026-02-09, 5w
    T2.2 台体制造(碳纤维)            :c2, 2026-02-09, 4w
    T2.3/2.4 主副台配盘              :crit, c3, 2026-03-09, 3w
    T2.5/2.6 软件+VCU台架联试        :c4, 2026-02-16, 6w
    M2 出厂就绪                      :milestone, crit, m2, 2026-04-03, 0d

    section P3 FAT
    FAT 六项工厂验收+发运            :crit, d1, 2026-03-30, 2w

    section P4 预铺与安装
    T4.1 船厂线缆预铺(与FAT并行)     :e1, 2026-02-09, 3w
    外装设备安装(惯导/雷达/摄像头等) :crit, e2, 2026-04-13, 2w
    T4.8 驾控台就位+机舱对接(712配合) :crit, e3, 2026-04-20, 1w
    M3 安装完成                      :milestone, crit, m3, 2026-04-24, 0d

    section P5 HAT
    HAT 五项系泊试验(含失效注入)     :crit, f1, 2026-04-27, 2w
    M4 系泊通过                      :milestone, crit, m4, 2026-05-08, 0d

    section P6 SAT+观察
    SAT 三项+吊舱映射标定            :crit, g1, 2026-05-11, 2w
    M5 航行通过                      :milestone, crit, m5, 2026-05-22, 0d
    稳定观察期 ≥30天·可用度≥99%      :crit, g2, 2026-05-25, 5w

    section P7 交付
    随机文件/培训/as-built           :h1, 2026-06-22, 2w
    五方清点验收签字                 :crit, h2, 2026-06-29, 1w
    M6 交付验收                      :milestone, crit, m6, 2026-07-03, 0d
