gantt
    title 30周总体计划（示意基准：W1=2026-07-06，以实际项目T0对齐后为准）
    dateFormat YYYY-MM-DD
    axisFormat %m/%d
    todayMarker off

    section 造型与数据(F1线)
    概念设计·3方向 (W1-W5)          :zx1, 2026-07-06, 5w
    M1 概念评审 (W5)                :milestone, m1, 2026-08-07, 0d
    造型深化 3→1 (W6-W8)            :zx2, 2026-08-10, 3w
    M2 造型锁定 (W8)                :milestone, m2, 2026-08-28, 0d
    CAS/A面建模 (W8-W11)            :zx3, 2026-08-24, 4w
    M3 数据冻结·F1 (W11)            :milestone, crit, m3, 2026-09-18, 0d

    section 结构与车身(关键路径)
    框架设计 (W9-W12)               :crit, jg1, 2026-08-31, 4w
    框架制造 (W12-W14)              :crit, jg2, 2026-09-21, 3w
    M4 框架完成 (W14)               :milestone, crit, m4, 2026-10-09, 0d
    车身 (W15-W18)                  :crit, jg3, 2026-10-12, 4w
    内饰 (W17-W19)                  :crit, jg4, 2026-10-26, 3w
    总装 (W19-W22)                  :crit, jg5, 2026-11-09, 4w

    section 软件·杭州
    G1 Mock启动 (W1)                :milestone, g1, 2026-07-06, 0d
    G2 接口契约冻结·F2 (W2-W3)      :crit, rj1, 2026-07-13, 2w
    前后端开发·基于Mock (W3-W19)    :rj2, 2026-07-20, 17w
    M5 UI/软件主体 (W20)            :milestone, m5, 2026-11-20, 0d

    section 嵌入式/硬件·昆山
    网关开发 CAN FD↔MQTT (W3-W14)   :qr1, 2026-07-20, 12w
    客屏适配/机构集成 (W13-W20)     :qr2, 2026-09-28, 8w

    section 外部协同(建议窗口·待对方确认)
    契约⑤ 智控接口冻结 (W3-W4)      :crit, wb1, 2026-07-20, 2w
    契约⑥ 三电供电方案确认 (W4-W6)  :crit, wb2, 2026-07-27, 3w
    契约⑦ 机舱安装边界确认 (W4-W6)  :crit, wb3, 2026-07-27, 3w
    智控联调窗口 (W20-W22)          :wb4, 2026-11-16, 3w
    三电/机舱现场配合 (W22-W26)     :wb5, 2026-11-30, 5w

    section 集成与验收
    G3 真硬件集成 (W22-W26)         :crit, jc1, 2026-11-30, 5w
    M6 预验收 (W26)                 :milestone, crit, m6, 2027-01-01, 0d
    调优/稳定性/彩排 (W27-W30)      :jc2, 2027-01-04, 4w
    M7 终验收 (W30)                 :milestone, crit, m7, 2027-01-29, 0d
